# Task3

Schedule from MS Project, 2022-03-01 to 2022-09-21, costs in ₽.
HP
Карта города на основе модуля отображения. 6 месяцев. 50 000 руб.

## Calendars

- Стандартный: Mon-Fri 09:00-13:00, 14:00-18:00; Sat-Sun off. Exceptions (off unless hours are given): 2022-03-07 to 2022-03-08 (8 Марта), 2022-05-02 to 2022-05-03 (День Труда), 2022-05-09 to 2022-05-10 (День Победы), 2022-06-13 (День России).

## Resources

| Resource | Group | Rate | Cost per use |
| --- | --- | --- | --- |
| Ведущий программист | Программирование | 10 | 100 |
| Программист#1 | Программирование | 7 | 50 |
| Программист#2 | Программирование | 7 | 50 |
| Программист#3 | Программирование | 7 | 50 |
| Программист#4 | Программирование | 7 | 50 |
| Системный аналитик | Анализ | 20 | 300 |
| Художник-дизайнер | Дизайн | 8 | 70 |
| Технический писатель | Документация | 5 | 20 |
| Web-дизайнер | Internet | 7 | 50 |
| 3D аниматор | Дизайн | 8 | 70 |
| Мультимедиа-корреспондент | М-медиа | 3 | 20 |
| Наборщик данных#1 | Ввод данных | 2 | 10 |
| Наборщик данных#2 | Ввод данных | 2 | 10 |
| Наборщик данных#3 | Ввод данных | 2 | 10 |
| Наборщик данных#4 | Ввод данных | 2 | 10 |
| Наборщик данных#5 | Ввод данных | 2 | 10 |
| Дополнительный сервер | Дополнительный | 2 |  |

## Schedule

| ID | WBS | Task | Type | Duration | Start | Finish | Predecessors | Total slack | Free slack | Resources | Work | Cost |
| --- | --- | --- | --- | --- | --- | --- | --- | --- | --- | --- | --- | --- |
| 1 | 1 | Начало проекта | milestone | 0w | 2022-03-01 | 2022-03-01 |  | 70d | 0d |  |  |  |
| 2 | 2 | **Создание интерфейса** |  | 110d | 2022-03-01 | 2022-08-10 | 1 | 0d |  |  | 560h | 5,550 |
| 3 | 2.1 | **Разработка дизайна интерфейса** |  | 25d | 2022-03-01 | 2022-04-06 |  | 70d | 0d |  | 320h | 2,770 |
| 4 | 2.1.1 | Разработка 2D графических элементов |  | 3w | 2022-03-01 | 2022-03-23 |  | 70d | 0d | Художник-дизайнер | 120h | 1,030 |
| 5 | 2.1.2 | Разработка 3D графических элементов |  | 2w | 2022-03-01 | 2022-03-16 | 4SS | 70d | 0d | 3D аниматор | 80h | 710 |
| 6 | 2.1.3 | Создание заставки |  | 3w | 2022-03-17 | 2022-04-06 | 5 | 70d |  | 3D аниматор | 120h | 1,030 |
| 7 | 2.2 | Программирование интерфейса |  | 3w | 2022-07-21 | 2022-08-10 | 3, 12 | 0d |  | Программист#3; Программист#4 | 240h | 1,780 |
| 8 | 3 | **Построение базы объектов** |  | 85d | 2022-03-24 | 2022-07-27 |  | 40d |  | Дополнительный сервер | 5729h | 15,548 |
| 9 | 3.1 | Анализ и построение структуры базы объектов |  | 2w | 2022-03-24 | 2022-04-06 |  | 40d | 0d | Системный аналитик | 80h | 1,900 |
| 10 | 3.2 | Программирование средств обработки базы объектов |  | 3w | 2022-04-07 | 2022-04-27 | 9 | 40d | 0d | Программист#3; Программист#4 | 240h | 1,780 |
| 11 | 3.3 | Наполнение базы объектов |  | 12w | 2022-04-28 | 2022-07-27 | 10 | 40d |  | Наборщик данных#1; Наборщик данных#2; Наборщик данных#3; Наборщик данных#4; Наборщик данных#5 | 2400h | 4,850 |
| 12 | 4 | **Создание ядра GIS** |  | 95d | 2022-03-01 | 2022-07-20 |  | 0d |  |  | 1880h | 18,680 |
| 13 | 4.1 | Анализ и проектирование ядра |  | 3w | 2022-03-01 | 2022-03-23 |  | 0d |  | Ведущий программист; Системный аналитик | 240h | 4,000 |
| 14 | 4.2 | Создание модели ядра |  | 5w | 2022-03-24 | 2022-04-27 | 13 | 0d |  | Ведущий программист; Программист#1 | 400h | 3,550 |
| 15 | 4.3 | Тестирование модели ядра |  | 1w | 2022-04-28 | 2022-05-06 | 14 | 0d |  | Программист#1 | 40h | 330 |
| 16 | 4.4 | Создание рабочей версии ядра |  | 10w | 2022-05-11 | 2022-07-20 | 15 | 0d |  | Ведущий программист; Программист#1; Программист#2 | 1200h | 9,800 |
| 17 | 5 | Создание мультемедиа-наполнения |  | 6w | 2022-04-07 | 2022-05-24 | 3 | 85d | 83d | Мультимедиа-корреспондент | 240h | 740 |
| 18 | 6 | Создание справочной системы |  | 2w | 2022-08-22 | 2022-09-02 | 7 | 13d | 18d | Технический писатель | 80h | 420 |
| 19 | 7 | **Создание руководства пользователя** |  | 17d | 2022-07-28 | 2022-08-19 | 7FS-10d | 0d |  |  | 160h | 1,010 |
| 20 | 7.1 | Разработка дизайна руководства |  | 1w | 2022-07-28 | 2022-08-03 |  | 0d |  | Художник-дизайнер | 40h | 390 |
| 21 | 7.2 | Написание руководства пользователя |  | 3w | 2022-08-01 | 2022-08-19 | 20SS+2d | 0d |  | Технический писатель | 120h | 620 |
| 22 | 8 | **Создание web-сайта и поддержка** |  | 23d | 2022-08-01 | 2022-08-31 |  | 0d |  |  | 248h | 2,106 |
| 23 | 8.1 | Разработка структуры сайта |  | 1d | 2022-08-01 | 2022-08-01 | 21SS | 0d |  | Web-дизайнер | 8h | 106 |
| 24 | 8.2 | Разработка дизайна сайта |  | 1.4w | 2022-08-02 | 2022-08-10 | 23 | 0d |  | 3D аниматор; Web-дизайнер; Художник-дизайнер | 120h | 1,110 |
| 25 | 8.3 | Наполнение сайта |  | 3w | 2022-08-11 | 2022-08-31 | 24 | 0d |  | Web-дизайнер | 120h | 890 |
| 26 | 9 | Тестирование сайта |  | 4w | 2022-08-25 | 2022-09-21 | 22FS-1w | 0d |  | Ведущий программист; Программист#1; Программист#2 | 480h | 4,040 |
| 27 | 10 | Сдача сайта в эксплуатацию | milestone | 0w | 2022-09-21 | 2022-09-21 | 26 | 0d |  |  |  |  |
